# ПП-6С-ЛР1

How a schedule from MS Project changed from version to version. A marks actual dates.

## Version 1 (saved 2024-02-12, file PP-6S-LR1.mpp)

| ID | WBS | Task | Duration | Start | Finish | Predecessors | Total float | Constraint |
| --- | --- | --- | --- | --- | --- | --- | --- | --- |
| 1 | 1 | **Создание матрицы планера** | 10.88d | 2024-02-12 | 2024-02-27 |  | 18.12d |  |
| 2 |  | Создание черновой планера из пенопласта на ЧПУ станке | 1d | 2024-02-12 | 2024-02-12 |  | 18.88d | start no earlier than 2024-02-12 |
| 3 |  | Обработка черновой матрицы путём обработки образивом и шпатлеванием | 3d | 2024-02-13 | 2024-02-15 | 2 | 18.88d | finish no earlier than 2024-02-15 |
| 4 |  | Покрытие чистовой матрицы воском и гелькоутом | 3d | 2024-02-16 | 2024-02-20 | 3 | 18.88d | start no earlier than 2024-02-16 |
| 5 |  | Нанесение стекловолкна на чистовую матрицу с использованием полиэфирной смолы | 3d | 2024-02-21 | 2024-02-27 | 4 | 18.12d | finish no earlier than 2024-02-27 |
| 6 | 2 | **Создание деталей планера из композитных материалов** | 6d | 2024-02-28 | 2024-03-06 |  | 12d |  |
| 7 |  | Нанесение стекловокна на готовую матрицу с использованием полиэфирной смолы | 3d | 2024-02-28 | 2024-03-01 |  | 12d | start no earlier than 2024-02-28 |
| 8 |  | Снятие готовой детали с матрицы и её обработка | 3d | 2024-03-04 | 2024-03-06 | 7 | 12d | finish no earlier than 2024-03-06 |
| 9 | 3 | **Создание силовых конструкций планера** | 6d | 2024-03-07 | 2024-03-15 |  | 6d |  |
| 10 |  | Вырезание профильного металла | 2d | 2024-03-07 | 2024-03-11 |  | 6d | start no earlier than 2024-03-07 |
| 11 |  | Обработка вырезанных деталей | 2d | 2024-03-12 | 2024-03-13 | 10 | 6d |  |
| 12 |  | Сваривание деталей в единую конструкцию | 2d | 2024-03-14 | 2024-03-15 | 11 | 6d |  |
| 13 | 4 | **Сборка планера и лакокрасочные работы** | 5d | 2024-03-18 | 2024-03-22 |  | 1d |  |
| 14 |  | Установка силовых конструкций в детали планера | 1d | 2024-03-18 | 2024-03-18 |  | 1d | start no earlier than 2024-03-18 |
| 15 |  | Установка кокпита, фонаря кабины пилота, электроники и сервоприводов | 1d | 2024-03-19 | 2024-03-19 | 14 | 1d |  |
| 16 |  | Грунтование, покраска и лакировка планера | 3d | 2024-03-20 | 2024-03-22 | 15 | 1d |  |
| 17 |  | Сдача планера заказчику | 0d | 2024-03-25 | 2024-03-25 |  |  | start no earlier than 2024-03-25 |

## Version 2 (saved 2024-03-08, file PP-6S-LR2.mpp)

Last finish 2024-03-25 → 2024-03-19 (-6d).

Added:

| ID | Task | Duration | Start | Finish | Predecessors | Constraint | Resources |
| --- | --- | --- | --- | --- | --- | --- | --- |
| 16 | **Лакокрасочные работы** | 7d | 2024-03-11 | 2024-03-19 |  |  |  |
| 17 | Грунтование планера | 2d | 2024-03-11 | 2024-03-12 | 15 | start no earlier than 2024-03-06 | Краска авиационная [1 л.]; Краскопульт [1 шт.] |
| 18 | Покарска планера | 2d | 2024-03-13 | 2024-03-14 | 17 |  | Краска авиационная [1 л.]; Краскопульт [1 шт.] |
| 19 | Лакировка планера | 2d | 2024-03-15 | 2024-03-18 | 18 | finish no earlier than 2024-03-18 | Краска авиационная [1 л.]; Краскопульт [1 шт.] |

Removed: 16 Грунтование, покраска и лакировка планера; 17 Сдача планера заказчику

Changed:

| ID | Task | Start | Finish | Duration | Total float | Predecessors | Other |
| --- | --- | --- | --- | --- | --- | --- | --- |
| 1 | **Создание матрицы планера** |  | 2024-02-27 → 2024-02-21 (-6d) | 10.88d → 8d | 18.12d → 3d |  | resources Воск [1 кг.]; Гелькоут [1 кг.]; Инструменты (маятниковая пила, ЧПУ станок и др.) [1 шт.]; Пенопласт [1 м^3.]; Полеэфирная смола [1 кг.]; Стекловолокно [1 м^3.]; Шпатлёвка [1 кг.] → none |
| 2 | Создание черновой планера из пенопласта на ЧПУ станке |  |  |  | 18.88d → 4d |  | resources Инструменты (маятниковая пила, ЧПУ станок и др.) [1 шт.]; Пенопласт [1 м^3.] → Пенопласт [1 м^3.]; ЧПУ станок [1 шт.] |
| 3 | Обработка черновой матрицы путём обработки образивом и шпатлеванием |  |  | 3d → 2d | 18.88d → 3.12d |  | resources Шпатлёвка [1 кг.] → Шпатлёвка [1 кг.]; Образивный материал [1 мм.] |
| 4 | Покрытие чистовой матрицы воском и гелькоутом |  | 2024-02-20 → 2024-02-19 (-1d) | 3d → 2d | 18.88d → 3d |  | resources Воск [1 кг.]; Гелькоут [1 кг.] → Воск [1 кг.]; Гелькоут [1 кг.]; Валик [1 шт.]; Кисточка [1 шт.] |
| 5 | Нанесение стекловолкна на чистовую матрицу с использованием полиэфирной смолы | 2024-02-21 → 2024-02-20 (-1d) | 2024-02-27 → 2024-02-21 (-6d) | 3d → 2d | 18.12d → 3d |  | constraint finish no earlier than 2024-02-27 → start no earlier than 2024-02-20; resources Полеэфирная смола [1 кг.]; Стекловолокно [1 м^3.] → Полеэфирная смола [1 кг.]; Стекловолокно [1 м^3.]; Валик [1 шт.]; Кисточка [1 шт.] |
| 6 | **Создание деталей планера из композитных материалов** | 2024-02-28 → 2024-02-22 (-6d) | 2024-03-06 → 2024-03-01 (-5d) | 6d → 5d | 12d → 1.12d |  | resources Воск [1 кг.]; Инструменты (маятниковая пила, ЧПУ станок и др.) [1 шт.]; Полеэфирная смола [1 кг.]; Стекловолокно [1 м^3.]; Шпатлёвка [1 кг.] → none |
| 7 | Нанесение стекловокна на готовую матрицу с использованием полиэфирной смолы | 2024-02-28 → 2024-02-22 (-6d) | 2024-03-01 → 2024-02-27 (-3d) | 3d → 2d | 12d → 2.12d | none → 5 | constraint start no earlier than 2024-02-28 → finish no earlier than 2024-02-27; resources Воск [1 кг.]; Полеэфирная смола [1 кг.]; Стекловолокно [1 м^3.] → Воск [1 кг.]; Полеэфирная смола [1 кг.]; Стекловолокно [1 м^3.]; Валик [1 шт.]; Кисточка [1 шт.] |
| 8 | Снятие готовой детали с матрицы и её обработка | 2024-03-04 → 2024-02-28 (-5d) | 2024-03-06 → 2024-03-01 (-5d) | 3d → 2d | 12d → 1.12d |  | constraint finish no earlier than 2024-03-06 → finish no earlier than 2024-03-01; resources Инструменты (маятниковая пила, ЧПУ станок и др.) [1 шт.]; Шпатлёвка [1 кг.] → Шпатлёвка [1 кг.]; Образивный материал [1 мм.]; Шлифовальная машинка [1 шт.] |
| 9 | **Создание силовых конструкций планера** | 2024-03-07 → 2024-02-12 (-24d) | 2024-03-15 → 2024-02-20 (-24d) | 6d → 7d | 6d → 8d |  | resources Инструменты (маятниковая пила, ЧПУ станок и др.) [1 шт.]; Профильный металл (40x20x2) [1 кг.] → none |
| 10 | Вырезание профильного металла | 2024-03-07 → 2024-02-12 (-24d) | 2024-03-11 → 2024-02-15 (-25d) |  | 6d → 8d |  | constraint start no earlier than 2024-03-07 → start no earlier than 2024-02-12; resources Инструменты (маятниковая пила, ЧПУ станок и др.) [1 шт.]; Профильный металл (40x20x2) [1 кг.] → Профильный металл (40x20x2) [1.88 кг.]; Маятниковая пила [1.88 шт.]; Отрезные диски [1.88 шт.] |
| 11 | Обработка вырезанных деталей | 2024-03-12 → 2024-02-16 (-25d) | 2024-03-13 → 2024-02-19 (-23d) |  | 6d → 8d |  | resources Инструменты (маятниковая пила, ЧПУ станок и др.) [1 шт.]; Профильный металл (40x20x2) [1 кг.] → Болгарка [1 шт.]; Отрезные диски [1 шт.] |
| 12 | Сваривание деталей в единую конструкцию | 2024-03-14 → 2024-02-20 (-23d) | 2024-03-15 → 2024-02-20 (-24d) | 2d → 1d | 6d → 8d |  | constraint none → finish no earlier than 2024-02-15; resources Инструменты (маятниковая пила, ЧПУ станок и др.) [1 шт.]; Профильный металл (40x20x2) [1 кг.] → Полуавтомат сварочный [1 шт.] |
| 13 | **Сборка планера** | 2024-03-18 → 2024-03-04 (-14d) | 2024-03-22 → 2024-03-07 (-15d) | 5d → 4d |  |  | was named Сборка планера и лакокрасочные работы; resources Инструменты (маятниковая пила, ЧПУ станок и др.) [1 шт.]; Кокпит [1 шт.]; Сервоприводы [1 шт.]; Фонарь кабины пилота [1 шт.] → none |
| 14 | Установка силовых конструкций в детали планера | 2024-03-18 → 2024-03-04 (-14d) | 2024-03-18 → 2024-03-05 (-13d) | 1d → 2d |  | none → 12, 8 | constraint start no earlier than 2024-03-18 → start no earlier than 2024-03-02; resources Инструменты (маятниковая пила, ЧПУ станок и др.) [1 шт.] → Набор бит и головок [1 шт.]; Шуруповёрт [1 шт.] |
| 15 | Установка кокпита, фонаря кабины пилота, электроники и сервоприводов | 2024-03-19 → 2024-03-06 (-13d) | 2024-03-19 → 2024-03-07 (-12d) | 1d → 2d |  |  | constraint none → start no earlier than 2024-03-05; resources Инструменты (маятниковая пила, ЧПУ станок и др.) [1 шт.]; Кокпит [1 шт.]; Сервоприводы [1 шт.]; Фонарь кабины пилота [1 шт.] → Кокпит [1 шт.]; Сервоприводы [1 шт.]; Фонарь кабины пилота [1 шт.]; Набор бит и головок [1 шт.]; Шуруповёрт [1 шт.] |

## Version 3 (saved 2024-03-23, file PP-6S-LR3.mpp)

Last finish stays 2024-03-19. Complete tasks 0 → 7.

Changed:

| ID | Task | Start | Finish | Duration | Complete | Total float | Other |
| --- | --- | --- | --- | --- | --- | --- | --- |
| 1 | **Создание матрицы планера** | 2024-02-12 A | 2024-02-21 A |  | 0% → 100% | 3d → none |  |
| 2 | Создание черновой планера из пенопласта на ЧПУ станке | 2024-02-12 A | 2024-02-12 A |  | 0% → 100% | 4d → none | resources Пенопласт [1 м^3.]; ЧПУ станок [1 шт.] → Пенопласт [1 м^3.]; ЧПУ станок [1 шт.]; Рабочие по созданию матрицы |
| 3 | Обработка черновой матрицы путём обработки образивом и шпатлеванием | 2024-02-13 A | 2024-02-15 A |  | 0% → 100% | 3.12d → none | resources Шпатлёвка [1 кг.]; Образивный материал [1 мм.] → Шпатлёвка [2 кг.]; Образивный материал [2 мм.]; Рабочие по созданию матрицы |
| 4 | Покрытие чистовой матрицы воском и гелькоутом | 2024-02-16 A | 2024-02-19 A |  | 0% → 100% | 3d → none | resources Воск [1 кг.]; Гелькоут [1 кг.]; Валик [1 шт.]; Кисточка [1 шт.] → Воск [1 кг.]; Гелькоут [1 кг.]; Валик [1 шт.]; Кисточка [1 шт.]; Рабочие по созданию матрицы |
| 5 | Нанесение стекловолкна на чистовую матрицу с использованием полиэфирной смолы | 2024-02-20 A | 2024-02-21 A |  | 0% → 100% | 3d → none | resources Полеэфирная смола [1 кг.]; Стекловолокно [1 м^3.]; Валик [1 шт.]; Кисточка [1 шт.] → Полеэфирная смола [1 кг.]; Стекловолокно [1 м^3.]; Валик [1 шт.]; Кисточка [1 шт.]; Рабочие по созданию матрицы |
| 7 | Нанесение стекловокна на готовую матрицу с использованием полиэфирной смолы |  |  |  |  |  | resources Воск [1 кг.]; Полеэфирная смола [1 кг.]; Стекловолокно [1 м^3.]; Валик [1 шт.]; Кисточка [1 шт.] → Воск [1 кг.]; Полеэфирная смола [1 кг.]; Стекловолокно [1 м^3.]; Валик [1 шт.]; Кисточка [1 шт.]; Рабочие по созданию деталей из композитным материалов |
| 8 | Снятие готовой детали с матрицы и её обработка |  |  |  |  |  | resources Шпатлёвка [1 кг.]; Образивный материал [1 мм.]; Шлифовальная машинка [1 шт.] → Шпатлёвка [1 кг.]; Образивный материал [1 мм.]; Шлифовальная машинка [1 шт.]; Рабочие по созданию деталей из композитным материалов |
| 9 | **Создание силовых конструкций планера** | 2024-02-12 A | 2024-02-20 → 2024-02-16 A (-4d) | 7d → 5d | 0% → 100% | 8d → none |  |
| 10 | Вырезание профильного металла | 2024-02-12 A | 2024-02-15 → 2024-02-13 A (-2d) |  | 0% → 100% | 8d → none | resources Профильный металл (40x20x2) [1.88 кг.]; Маятниковая пила [1.88 шт.]; Отрезные диски [1.88 шт.] → Профильный металл (40x20x2) [1 кг.]; Маятниковая пила [1 шт.]; Отрезные диски [1 шт.]; Рабочие по обработке металла |
| 11 | Обработка вырезанных деталей | 2024-02-16 → 2024-02-14 A (-2d) | 2024-02-19 → 2024-02-15 A (-4d) |  | 0% → 100% | 8d → none | resources Болгарка [1 шт.]; Отрезные диски [1 шт.] → Болгарка [1 шт.]; Отрезные диски [1 шт.]; Рабочие по обработке металла |
| 12 | Сваривание деталей в единую конструкцию | 2024-02-20 → 2024-02-16 A (-4d) | 2024-02-20 → 2024-02-16 A (-4d) |  | 0% → 100% | 8d → none | resources Полуавтомат сварочный [1 шт.] → Полуавтомат сварочный [1 шт.]; Рабочие по обработке металла |
| 14 | Установка силовых конструкций в детали планера |  |  |  |  |  | resources Набор бит и головок [1 шт.]; Шуруповёрт [1 шт.] → Набор бит и головок [1 шт.]; Шуруповёрт [1 шт.]; Рабочие по сборке |
| 15 | Установка кокпита, фонаря кабины пилота, электроники и сервоприводов |  |  |  |  |  | resources Кокпит [1 шт.]; Сервоприводы [1 шт.]; Фонарь кабины пилота [1 шт.]; Набор бит и головок [1 шт.]; Шуруповёрт [1 шт.] → Кокпит [1 шт.]; Сервоприводы [1 шт.]; Фонарь кабины пилота [1 шт.]; Набор бит и головок [1 шт.]; Шуруповёрт [1 шт.]; Рабочие по сборке |
| 16 | **Лакокрасочные работы** |  |  | 7d → 7d? |  |  |  |
| 17 | Грунтование планера |  |  |  |  |  | resources Краска авиационная [1 л.]; Краскопульт [1 шт.] → Краска авиационная [1 л.]; Краскопульт [1 шт.]; Рабочие по лакокрасочным работам |
| 18 | Покарска планера |  |  |  |  |  | resources Краска авиационная [1 л.]; Краскопульт [1 шт.] → Краска авиационная [1 л.]; Краскопульт [1 шт.]; Рабочие по лакокрасочным работам |
| 19 | Лакировка планера |  |  |  |  |  | resources Краска авиационная [1 л.]; Краскопульт [1 шт.] → Краска авиационная [1 л.]; Краскопульт [1 шт.]; Рабочие по лакокрасочным работам |

## Version 4 (data date 2024-04-05, saved 2024-04-06, file PP-6S-LR4.mpp)

Note of the change: Merge branch 'main' of https://github.com/Evgenij1234/Studies

Last finish stays 2024-03-19.

Changed:

| ID | Task | Start | Duration | Total float | Other |
| --- | --- | --- | --- | --- | --- |
| 1 | **Создание матрицы планера** |  | 8d → 7.75d |  |  |
| 2 | Создание черновой планера из пенопласта на ЧПУ станке |  | 1d → 0.75d |  |  |
| 3 | Обработка черновой матрицы путём обработки образивом и шпатлеванием |  | 2d → 1.75d |  | resources Шпатлёвка [2 кг.]; Образивный материал [2 мм.]; Рабочие по созданию матрицы → Шпатлёвка [1 кг.]; Образивный материал [1 мм.]; Рабочие по созданию матрицы |
| 4 | Покрытие чистовой матрицы воском и гелькоутом |  | 2d → 1.75d |  |  |
| 5 | Нанесение стекловолкна на чистовую матрицу с использованием полиэфирной смолы |  | 2d → 1.75d |  |  |
| 6 | **Создание деталей планера из композитных материалов** | 2024-02-22 → 2024-02-26 (+4d) | 5d → 4.75d | 1.12d → 1.62d |  |
| 7 | Нанесение стекловокна на готовую матрицу с использованием полиэфирной смолы | 2024-02-22 → 2024-02-26 (+4d) | 2d → 1.75d | 2.12d → 2.88d |  |
| 8 | Снятие готовой детали с матрицы и её обработка | 2024-02-28 → 2024-02-29 (+1d) | 2d → 1.75d | 1.12d → 1.62d |  |
| 10 | Вырезание профильного металла |  | 2d → 1.75d |  |  |
| 11 | Обработка вырезанных деталей |  | 2d → 1.75d |  |  |
| 12 | Сваривание деталей в единую конструкцию |  | 1d → 0.75d |  |  |
| 13 | **Сборка планера** |  | 4d → 3.5d | 1d → 1.5d |  |
| 14 | Установка силовых конструкций в детали планера |  | 2d → 1.75d | 1d → 1.5d |  |
| 15 | Установка кокпита, фонаря кабины пилота, электроники и сервоприводов | 2024-03-06 → 2024-03-05 (-1d) | 2d → 1.75d | 1d → 1.5d |  |
| 16 | **Лакокрасочные работы** |  | 7d? → 7d |  |  |
| 17 | Грунтование планера | 2024-03-11 → 2024-03-07 (-4d) |  | 1d → 1.5d |  |
| 18 | Покарска планера | 2024-03-13 → 2024-03-12 (-1d) |  | 1d → 1.5d |  |
| 19 | Лакировка планера | 2024-03-15 → 2024-03-14 (-1d) |  | 1d → 1.12d |  |
